# Sistema de Control de Mantenimiento de Equipo de Cómputo

Schedule from GanttProject, 2012-06-27 to 2014-06-27.
Facultad de Matemáticas

## Calendars

- Project calendar: Mon-Fri working; Sat-Sun off. Exceptions (off unless hours are given): 2012-07-16 to 2012-08-03, 2012-09-15 to 2012-09-16, 2012-10-12, 2012-11-01 to 2012-11-02, 2012-11-19, 2012-12-19 to 2013-01-06, 2013-02-04, 2013-02-11 to 2013-02-12, 2013-02-25, 2013-03-03, 2013-03-18, 2013-03-25 to 2013-04-07, 2013-04-25, 2013-05-01, 2013-05-10, 2013-05-15, 2013-07-17 to 2013-08-06, 2013-09-15 to 2013-09-16, 2013-11-01 to 2013-11-02, 2013-11-18, 2013-12-18 to 2014-01-05.

## Schedule

| ID | WBS | Task | Duration | Start | Finish | Predecessors | Complete | Constraint |
| --- | --- | --- | --- | --- | --- | --- | --- | --- |
| 1 | 1 | Analizar Requerimientos | 18d | 2012-06-27 | 2012-08-10 |  | 95% |  |
| 2 | 2 | Inducción al equipo de desarrollo | 10d | 2012-08-13 | 2012-08-24 |  | 100% |  |
| 3 | 3 | **Diseñar** | 25d | 2012-08-27 | 2012-09-28 | 1, 2 | 91% |  |
| 4 | 3.1 | Diseño de Base de Datos | 25d | 2012-08-27 | 2012-09-28 |  | 98% |  |
| 5 | 3.2 | Diseño de Interfaz | 25d | 2012-08-27 | 2012-09-28 |  | 85% |  |
| 6 | 4 | **Desarrollar** | 297d | 2012-10-01 | 2014-02-20 | 3 | 47% |  |
| 7 | 4.1 | **Módulo Acceso** | 10d | 2012-10-01 | 2012-10-15 |  | 78% |  |
| 8 | 4.1.1 | Autenticación con BD | 8d | 2012-10-01 | 2012-10-10 |  | 98% |  |
| 9 | 4.1.2 | Autenticación con LDAP | 2d | 2012-10-11 | 2012-10-15 | 8 |  | start no earlier than 2012-08-31 |
| 10 | 4.2 | **Módulo de Seguridad** | 13d | 2012-10-11 | 2012-10-30 | 8 | 76% | start no earlier than 2012-08-10 |
| 11 | 4.2.1 | Alta/Baja/Cambios de Usuarios | 4d | 2012-10-11 | 2012-10-17 | 8 | 70% | start no earlier than 2012-08-10 |
| 12 | 4.2.2 | Asignación de Roles a Usuarios | 9d | 2012-10-18 | 2012-10-30 | 11 | 80% |  |
| 13 | 4.3 | **Módulo de Catálogos** | 120d | 2012-10-31 | 2013-06-04 | 8 | 99% |  |
| 14 | 4.3.1 | Proveedores | 10d | 2012-10-31 | 2012-11-15 | 1, 10 | 100% |  |
| 15 | 4.3.2 | Dependencias | 10d | 2012-11-16 | 2012-11-30 | 14 | 100% |  |
| 16 | 4.3.3 | Clientes | 10d | 2012-12-03 | 2012-12-14 | 15 | 100% | start no earlier than 2012-07-23 |
| 17 | 4.3.4 | Contactos | 10d | 2012-12-17 | 2013-01-16 | 16 | 100% |  |
| 18 | 4.3.5 | Servicios | 10d | 2013-01-17 | 2013-01-30 | 1, 10, 17 | 100% | start no earlier than 2012-07-25 |
| 19 | 4.3.6 | Equipos | 10d | 2013-01-31 | 2013-02-18 | 18 | 100% |  |
| 20 | 4.3.7 | Modelos | 10d | 2013-02-19 | 2013-03-05 | 19 | 100% |  |
| 21 | 4.3.8 | Marcas | 10d | 2013-03-06 | 2013-03-20 | 20 | 100% |  |
| 22 | 4.3.9 | Refacciones | 10d | 2013-03-21 | 2013-04-17 | 1, 10, 21 | 100% |  |
| 23 | 4.3.10 | Trabajos | 10d | 2013-04-18 | 2013-05-03 | 22 | 100% |  |
| 24 | 4.3.11 | Accesorios | 10d | 2013-05-06 | 2013-05-21 | 23 | 100% |  |
| 25 | 4.3.12 | Cotizaciones | 10d | 2013-05-22 | 2013-06-04 | 24 | 90% |  |

| ID | WBS | Task | Duration | Start | Finish | Predecessors | Complete | Constraint |
| --- | --- | --- | --- | --- | --- | --- | --- | --- |
| 26 | 4.4 | **Módulo de Entrada de Equipo** | 50d | 2013-06-05 | 2013-09-03 | 10, 13 | 12% | start no earlier than 2012-07-29 |
| 27 | 4.4.1 | Alta/Baja/Cambios de entradas | 30d | 2013-06-05 | 2013-07-16 | 10, 13 | 20% | start no earlier than 2012-07-29 |
| 28 | 4.4.2 | Impresión de entradas | 20d | 2013-08-07 | 2013-09-03 | 27 |  |  |
| 29 | 4.5 | **Módulo de Salida de Equipo** | 35d | 2013-09-04 | 2013-10-23 | 10, 13, 26 |  |  |
| 30 | 4.5.1 | Alta/Baja/Cambios de salidas | 20d | 2013-09-04 | 2013-10-02 | 1, 10, 13, 26 |  |  |
| 31 | 4.5.2 | Impresión de Salidas | 15d | 2013-10-03 | 2013-10-23 | 1, 10, 13, 26, 30 |  |  |
| 32 | 4.6 | **Módulo de Seguimiento** | 31d | 2013-10-24 | 2013-12-09 | 29 |  |  |
| 33 | 4.6.1 | Asignación de estado del equipo | 8d | 2013-10-24 | 2013-11-05 | 1, 10, 13, 26, 29 |  |  |
| 34 | 4.6.2 | Asignación de personal | 8d | 2013-11-06 | 2013-11-15 | 33 |  |  |
| 35 | 4.6.3 | Trabajos realizados al equipo | 15d | 2013-11-19 | 2013-12-09 | 34 |  |  |
| 36 | 4.7 | **Módulo de Estadísticas** | 40d | 2013-12-10 | 2014-02-20 | 32 |  |  |
| 37 | 4.7.1 | Número de PC, Laptop, impresora, etc, en un período de tiempo | 16d | 2013-12-10 | 2014-01-17 | 1, 3, 8, 10, 13, 26, 29, 32 |  |  |
| 38 | 4.7.2 | Número de PC, Laptop, impresora, etc son baja | 16d | 2013-12-10 | 2014-01-17 | 35 |  |  |
| 39 | 4.7.3 | Número de PC, Laptop, impresora, etc en garantía | 16d | 2013-12-10 | 2014-01-17 | 35 |  |  |
| 40 | 4.7.4 | Mantenimientos preventivos y correctivos diagnosticados. | 8d | 2014-01-20 | 2014-01-29 | 39 |  |  |
| 41 | 4.7.5 | Tiempo promedio de diagnóstico (El tiempo de diagnóstico es desde que el equipo es recepcionado hasta que se finaliza el diagnóstico) | 8d | 2014-01-30 | 2014-02-10 | 40 |  |  |
| 42 | 4.7.6 | Tiempo promedio de reparación (con pieza, sin pieza) | 8d | 2014-02-11 | 2014-02-20 | 41 |  |  |
| 43 | 5 | Validar y probar | 30d | 2014-02-21 | 2014-04-03 | 6 | 40% |  |
| 44 | 6 | Documentar | 30d | 2014-04-04 | 2014-05-15 | 43 |  |  |
| 45 | 7 | Implementar | 8d | 2014-05-16 | 2014-05-27 | 44 | 30% |  |
| 46 | 8 | Capacitar | 15d | 2014-05-28 | 2014-06-17 | 45 |  |  |
| 47 | 9 | Liberar | 8d | 2014-06-18 | 2014-06-27 | 46 |  |  |
